# AudioSynth

How a schedule from GanttProject changed from version to version. A marks actual dates.

## Version 1 (saved 2012-10-26)

Note of the change: Started work on gantt chart

| ID | Task | Duration | Start | Finish | Predecessors |
| --- | --- | --- | --- | --- | --- |
| 1 | Layout Complete | 7d | 2012-11-05 | 2012-11-11 | 3, 5, 6 |
| 2 | CAM Files Sent to Sunstone | 3d | 2012-11-12 | 2012-11-14 | 1 |
| 3 | Verify Audio Amp Works | 2d | 2012-11-03 | 2012-11-04 | 4 |
| 4 | Layout and Fab audio amp circuit | 10d | 2012-10-24 | 2012-11-02 |  |
| 5 | Verify LCD Backlight Design | 12d | 2012-10-24 | 2012-11-04 |  |
| 6 | Schematic Design Review | 4d | 2012-10-24 | 2012-10-27 |  |
| 7 | Bring Up Board | 6d | 2012-11-15 | 2012-11-20 | 2 |
| 8 | Software Written | 27d | 2012-11-05 | 2012-12-01 | 3, 5 |
| 9 | Project Done | 1d | 2012-12-02 | 2012-12-02 | 7, 8 |

## Version 2 (saved 2012-11-04)

Note of the change: Added more detail to gantt chart: final review tomorrow.

Last finish stays 2012-12-02.

Added:

| ID | Task | Duration | Start | Finish | Predecessors | Resources |
| --- | --- | --- | --- | --- | --- | --- |
| 2 | Make Footprints | 2d | 2012-11-04 | 2012-11-05 | 5, 11, 13 | Jackson; Bradon; Andy |
| 4 | Verify Layout | 3d | 2012-11-08 | 2012-11-10 | 1 | Andy |
| 5 | Verify Audio Amp Design | 1d | 2012-11-03 | 2012-11-03 | 10 |  |
| 7 | Write UI Driver | 14d | 2012-11-03 | 2012-11-16 | 10, 11, 13 | Kevin |
| 8 | Write Synth Core | 14d | 2012-11-04 | 2012-11-17 | 5, 13 | Jackson [50%]; Bradon |
| 9 | Write EEPROM Driver | 14d | 2012-11-03 | 2012-11-16 | 10, 13 | Andy |
| 12 | Design LCD Daughterboard | 5d | 2012-11-03 | 2012-11-07 | 11 | Kevin |
| 15 | Verify PSU Works | 3d | 2012-11-22 | 2012-11-24 | 16 | Jackson |
| 16 | Receive Boards | 10d | 2012-11-12 | 2012-11-21 | 3 |  |
| 17 | Verify LCD Works | 5d | 2012-11-22 | 2012-11-26 | 7, 16 | Kevin |
| 18 | Verify EEPROM Works | 5d | 2012-11-22 | 2012-11-26 | 9, 10, 16 | Andy |
| 19 | Verify Channels Work | 5d | 2012-11-22 | 2012-11-26 | 8, 16 | Bradon |
| 22 | Build Enclosure | 3d | 2012-11-29 | 2012-12-01 | 13, 20 | Jackson; Bradon |

Changed:

| ID | Task | Start | Finish | Duration | Predecessors | Other |
| --- | --- | --- | --- | --- | --- | --- |
| 1 | Layout Board | 2012-11-05 → 2012-11-06 (+1d) | 2012-11-11 → 2012-11-07 (-4d) | 7d → 2d | 6, 11, 13 → 2, 5, 11, 13 | was named Layout Complete; resources none → Jackson; Bradon; Andy |
| 3 | CAM Files Sent to Sunstone | 2012-11-12 → 2012-11-11 (-1d) | 2012-11-14 → 2012-11-11 (-3d) | 3d → 1d | 1 → 4 | resources none → Bradon |
| 6 | Verify Audio Amp Works | 2012-11-03 → 2012-11-22 (+19d) | 2012-11-04 → 2012-11-26 (+22d) | 2d → 5d | 10 → 8, 16 |  |
| 10 | Layout and Fab audio amp circuit | 2012-10-24 → 2012-10-29 (+5d) |  | 10d → 5d |  |  |
| 11 | Verify LCD Backlight Design | 2012-10-24 → 2012-11-02 (+9d) | 2012-11-04 → 2012-11-02 (-2d) | 12d → 1d |  |  |
| 14 | Bring Up Board | 2012-11-15 → 2012-11-27 (+12d) | 2012-11-20 → 2012-11-27 (+7d) | 6d → 1d | 3 → 6, 15, 16, 17, 18, 19 |  |
| 20 | Software Written | 2012-11-05 → 2012-11-28 (+23d) | 2012-12-01 → 2012-11-28 (-3d) | 27d → 1d | 6, 11 → 5, 7, 8, 9, 11, 14 | resources none → Jackson; Bradon; Andy |
| 21 | Project Done |  |  |  | 14, 20 → 14, 20, 22 | resources none → Jackson; Bradon; Kevin; Andy |

## Version 3 (saved 2012-11-05)

Note of the change: Most work done on Gantt chart

Last finish 2012-12-02 → 2012-12-03 (+1d).

Added:

| ID | Task | Duration | Start | Finish | Predecessors |
| --- | --- | --- | --- | --- | --- |
| 14 | Code Integration | 5d | 2012-11-17 | 2012-11-21 | 6, 7, 8 |
| 16 | Verify CPU Works | 1d | 2012-11-22 | 2012-11-22 | 13 |

Changed:

| ID | Task | Start | Finish | Duration | Predecessors | Other |
| --- | --- | --- | --- | --- | --- | --- |
| 5 | Design LCD Daughterboard |  |  |  |  | resources Kevin → Kevin [33%] |
| 6 | Write EEPROM Driver |  |  |  |  | resources Andy → Andy [66%] |
| 7 | Write UI Driver |  |  |  |  | resources Kevin → Kevin [67%] |
| 8 | Write Synth Core | 2012-11-04 → 2012-11-03 (-1d) | 2012-11-17 → 2012-11-16 (-1d) |  | 4, 1 → 1 | resources Jackson [50%]; Bradon → Jackson [67%]; Bradon [67%] |
| 9 | Make Footprints |  |  |  |  | resources Jackson; Bradon; Andy → Jackson [33%]; Bradon [33%]; Andy [34%] |
| 10 | Layout Board |  |  |  |  | resources Jackson; Bradon; Andy → Jackson [33%]; Bradon [33%]; Andy [34%] |
| 11 | Verify Layout |  | 2012-11-10 → 2012-11-13 (+3d) | 3d → 6d |  | resources Andy → Andy [34%] |
| 12 | CAM Files Sent to Sunstone | 2012-11-11 → 2012-11-14 (+3d) | 2012-11-11 → 2012-11-14 (+3d) | 1d → 0d |  | resources Bradon → Bradon [33%] |
| 13 | Receive Boards | 2012-11-12 → 2012-11-15 (+3d) |  | 10d → 7d |  |  |
| 15 | Verify PSU Works |  | 2012-11-24 → 2012-11-22 (-2d) | 3d → 1d |  |  |
| 17 | Verify Audio Amp Works | 2012-11-22 → 2012-11-23 (+1d) | 2012-11-26 → 2012-11-27 (+1d) |  | 8, 13 → 6, 8, 15, 16 |  |
| 18 | Verify LCD Works | 2012-11-22 → 2012-11-23 (+1d) | 2012-11-26 → 2012-11-27 (+1d) |  | 7, 13 → 7, 15, 16 |  |
| 19 | Verify EEPROM Works | 2012-11-22 → 2012-11-23 (+1d) | 2012-11-26 → 2012-11-27 (+1d) |  | 6, 2, 13 → 2, 6, 15, 16 |  |
| 20 | Verify Channels Work | 2012-11-22 → 2012-11-23 (+1d) | 2012-11-26 → 2012-11-27 (+1d) |  | 8, 13 → 7, 8, 15, 16 |  |
| 21 | Bring Up Board | 2012-11-27 → 2012-11-28 (+1d) | 2012-11-27 → 2012-11-28 (+1d) | 1d → 0d |  |  |
| 22 | Software Written | 2012-11-28 → 2012-11-29 (+1d) | 2012-11-28 → 2012-11-29 (+1d) | 1d → 0d |  |  |
| 23 | Build Enclosure | 2012-11-29 → 2012-11-30 (+1d) | 2012-12-01 → 2012-12-02 (+1d) |  |  |  |
| 24 | Project Done | 2012-12-02 → 2012-12-03 (+1d) | 2012-12-02 → 2012-12-03 (+1d) | 1d → 0d |  |  |

## Version 4 (saved 2012-11-20)

Note of the change: Merge branch 'master' of github.com:killerfriend/womprats into i2c-test

Last finish stays 2012-12-03. Complete tasks 0 → 6.

Changed:

| ID | Task | Start | Finish | Complete |
| --- | --- | --- | --- | --- |
| 1 | Schematic Design Review |  |  | 0% → 100% |
| 2 | Layout and Fab audio amp circuit |  |  | 0% → 100% |
| 3 | Verify LCD Backlight Design |  |  | 0% → 100% |
| 4 | Verify Audio Amp Design |  |  | 0% → 100% |
| 8 | Write Synth Core | 2012-11-03 → 2012-10-28 (-6d) | 2012-11-16 → 2012-11-10 (-6d) |  |
| 9 | Make Footprints |  |  | 0% → 100% |
| 10 | Layout Board |  |  | 0% → 100% |
